# Projekt NEPHON

Schedule from GanttProject, 2009-02-23 to 2009-07-24, baseline: Speichern_1.

## Calendars

- Project calendar: Mon-Fri working; Sat-Sun off.

## Resources

| Resource | Group |
| --- | --- |
| Aeby Marc |  |
| Merz | Auftraggeber |
| Calmy-Rey | Projekt Office |
| Leuenberger | Projektmitarbeiter |
| Couchepin | Projektmitarbeiter |

## Schedule

| ID | WBS | Task | Type | Duration | Start | Finish | Predecessors | Complete | Baseline start | Baseline finish | Baseline duration | Resources |
| --- | --- | --- | --- | --- | --- | --- | --- | --- | --- | --- | --- | --- |
| 1 | 1 | **Initialisierung** |  | 10d | 2009-02-23 | 2009-03-06 |  | 92% | 2009-02-23 | 2009-03-06 | 10d |  |
| 2 | 1.1 | Projektplanung erstellen |  | 4d | 2009-02-23 | 2009-02-26 |  | 100% | 2009-02-23 | 2009-02-26 | 4d | Aeby Marc |
| 3 | 1.2 | Projektauftrag erstellen |  | 9d | 2009-02-23 | 2009-03-05 |  | 100% | 2009-02-23 | 2009-03-05 | 9d | Aeby Marc [20%]; Calmy-Rey |
| 4 | 1.3 | Freigabe Projektauftrag durch Auftraggeber | milestone | 0d | 2009-03-06 | 2009-03-06 | 2, 3 |  | 2009-03-06 | 2009-03-06 | 1d | Merz |
| 5 | 2 | **Voranalyse** |  | 57d | 2009-03-09 | 2009-05-26 |  | 9% | 2009-03-09 | 2009-05-18 | 51d |  |
| 6 | 2.1 | Anforderungen Benutzer einholen |  | 16d | 2009-03-09 | 2009-03-30 | 4 | 50% | 2009-03-09 | 2009-03-20 | 10d | Leuenberger [50%]; Couchepin [50%] |
| 7 | 2.2 | Pflichtenheft für Anbieter erstellen |  | 5d | 2009-03-31 | 2009-04-06 | 6 |  | 2009-03-23 | 2009-03-27 | 5d | Aeby Marc; Calmy-Rey [50%] |
| 8 | 2.3 | Offerten einholen und evalieren |  | 20d | 2009-04-07 | 2009-05-04 | 7 |  | 2009-03-30 | 2009-04-24 | 20d | Aeby Marc |
| 9 | 2.4 | Präsentation der Lösungen durch Anbieter |  | 3d | 2009-05-05 | 2009-05-07 | 8 |  | 2009-04-27 | 2009-04-29 | 3d | Aeby Marc; Leuenberger; Couchepin |
| 10 | 2.5 | Bewertung Lösungen der Anbieter |  | 2d | 2009-05-08 | 2009-05-11 | 9 |  | 2009-04-30 | 2009-05-01 | 2d | Aeby Marc; Leuenberger |
| 11 | 2.6 | Vorstudienbericht erstellen |  | 10d | 2009-05-12 | 2009-05-25 | 6, 10 |  | 2009-05-04 | 2009-05-15 | 10d | Calmy-Rey |
| 12 | 2.7 | Freigabe Vorstudienbericht durch Auftraggeber | milestone | 0d | 2009-05-26 | 2009-05-26 | 11 |  | 2009-05-18 | 2009-05-18 | 1d | Merz |
| 13 | 3 | **Konzept** |  | 16d | 2009-05-27 | 2009-06-17 |  |  | 2009-05-19 | 2009-06-09 | 16d |  |
| 14 | 3.1 | LAN / IT Workshop durchführen |  | 3d | 2009-05-27 | 2009-05-29 | 12 |  | 2009-05-19 | 2009-05-21 | 3d | Leuenberger; Couchepin |
| 15 | 3.2 | Benutzer Workshops durchführen für Userprofile |  | 5d | 2009-05-27 | 2009-06-02 | 12 |  | 2009-05-19 | 2009-05-25 | 5d | Calmy-Rey |
| 16 | 3.3 | Erstellung der Detailkonzepte |  | 5d | 2009-06-03 | 2009-06-09 | 14, 15 |  | 2009-05-26 | 2009-06-01 | 5d | Aeby Marc |
| 17 | 3.4 | Erstellung Testkonzepte für Abnahme |  | 3d | 2009-06-03 | 2009-06-05 | 14, 15 |  | 2009-05-26 | 2009-05-28 | 3d | Leuenberger |
| 18 | 3.5 | Erstellung der Schulungsunterlagen |  | 10d | 2009-06-03 | 2009-06-16 | 15 |  | 2009-05-26 | 2009-06-08 | 10d | Couchepin; Calmy-Rey |
| 19 | 3.6 | Hauptstudienbericht erstellen |  | 5d | 2009-06-10 | 2009-06-16 | 16, 17 |  | 2009-06-02 | 2009-06-08 | 5d | Calmy-Rey |
| 20 | 3.7 | Freigabe Hauptstudienbericht durch Auftraggeber | milestone | 0d | 2009-06-17 | 2009-06-17 | 17, 18, 19 |  | 2009-06-09 | 2009-06-09 | 1d | Aeby Marc |
| 21 | 4 | **Realisierung** |  | 16d | 2009-06-18 | 2009-07-09 |  |  | 2009-06-10 | 2009-07-01 | 16d |  |
| 22 | 4.1 | Durchführung der Anpassungen am LAN für VoIP |  | 5d | 2009-06-18 | 2009-06-24 | 20 |  | 2009-06-10 | 2009-06-16 | 5d | Couchepin |
| 23 | 4.2 | Installation der Call Manager und Voicegateways |  | 3d | 2009-06-25 | 2009-06-29 | 22 |  | 2009-06-17 | 2009-06-19 | 3d | Leuenberger |
| 24 | 4.3 | Erstellung der Schulungsinfrastruktur |  | 2d | 2009-06-30 | 2009-07-01 | 23 |  | 2009-06-22 | 2009-06-23 | 2d | Leuenberger |
| 25 | 4.4 | Abnahme Systemfunktionen und Benutzerfunktionen |  | 5d | 2009-07-02 | 2009-07-08 | 24 |  | 2009-06-24 | 2009-06-30 | 5d | Aeby Marc |
| 26 | 4.5 | Freigabe zur Einführung durch Auftraggeber | milestone | 0d | 2009-07-09 | 2009-07-09 | 25 |  | 2009-07-01 | 2009-07-01 | 1d | Merz |

| ID | WBS | Task | Type | Duration | Start | Finish | Predecessors | Baseline start | Baseline finish | Baseline duration | Resources |
| --- | --- | --- | --- | --- | --- | --- | --- | --- | --- | --- | --- |
| 27 | 5 | **Einführung** |  | 6d | 2009-07-10 | 2009-07-17 |  | 2009-07-02 | 2009-07-09 | 6d |  |
| 28 | 5.1 | Schulung der Mitarbeiter |  | 2d | 2009-07-10 | 2009-07-13 | 26 | 2009-07-02 | 2009-07-03 | 2d | Calmy-Rey |
| 29 | 5.2 | Installation der IP Phones |  | 5d | 2009-07-10 | 2009-07-16 | 26 | 2009-07-02 | 2009-07-08 | 5d | Leuenberger |
| 30 | 5.3 | Migration der bestehenden Amtsanschlüsse auf das neue System |  | 1d | 2009-07-17 | 2009-07-17 | 28, 29 | 2009-07-09 | 2009-07-09 | 1d | Leuenberger |
| 31 | 6 | **Projektabschluss** |  | 5d | 2009-07-20 | 2009-07-24 |  | 2009-07-10 | 2009-07-16 | 5d |  |
| 32 | 6.1 | Update Projektcontrolling |  | 2d | 2009-07-20 | 2009-07-21 | 30 | 2009-07-10 | 2009-07-13 | 2d | Aeby Marc |
| 33 | 6.2 | Erstellung des Abschlussberichtes |  | 3d | 2009-07-20 | 2009-07-22 | 30 | 2009-07-10 | 2009-07-14 | 3d | Aeby Marc; Calmy-Rey |
| 34 | 6.3 | Review Meeting |  | 1d | 2009-07-23 | 2009-07-23 | 33 | 2009-07-15 | 2009-07-15 | 1d | Aeby Marc; Leuenberger; Couchepin; Merz; Calmy-Rey |
| 35 | 6.4 | Auflösung der Projektorganisation durch Auftraggeber | milestone | 0d | 2009-07-24 | 2009-07-24 | 34 | 2009-07-16 | 2009-07-16 | 1d | Merz |
