# Project_test

Schedule from MS Project, 2003-11-13 to 2004-02-12.
SWISSCOM LTD

## Calendars

- Standard: Mon-Fri 08:00-12:00, 13:00-17:00; Sat-Sun off.

## Resources

| Resource |
| --- |
| SDC |
| PM |
| Orderdesk |
| Electrician |
| Cisco |
| Customer |
| NWP |
| P&L |
| SCU |
| Systems |
| NOC |
| s |
| NWP/SCU |

## Schedule

| ID | WBS | Task | Type | Duration | Start | Finish | Predecessors | Total slack | Free slack | Resources | Work |
| --- | --- | --- | --- | --- | --- | --- | --- | --- | --- | --- | --- |
| 1 | 1 | **Project Start** |  | 10d | 2003-11-13 | 2003-11-26 |  | 0d |  |  | 16h |
| 2 | 1.1 | Order Entry | milestone | 0d | 2003-11-13 | 2003-11-13 |  | 0d |  | SDC |  |
| 3 | 1.2 | Team Building |  | 2d | 2003-11-13 | 2003-11-14 | 2 | 0d |  | PM | 16h |
| 4 | 1.3 | Kick-Off Int/Ext | milestone | 0d | 2003-11-26 | 2003-11-26 | 3FS+8d | 0d |  | PM |  |
| 5 | 2 | **Orders** |  | 45d | 2003-11-13 | 2004-01-14 |  | 8d |  |  | 424h |
| 6 | 2.1 | Order Material |  | 1d | 2003-11-13 | 2003-11-13 | 2 | 8d | 0d | Orderdesk | 8h |
| 7 | 2.2 | Order Training |  | 1d | 2003-11-27 | 2003-11-27 | 4 | 51d | 50d | PM | 8h |
| 8 | 2.3 | Order Voice Links |  | 2w | 2003-11-27 | 2003-12-10 | 4 | 45d | 24d | SDC | 80h |
| 9 | 2.4 | Installation voice Links |  | 1d | 2004-01-14 | 2004-01-14 | 8, 26FS-10d | 21d |  | Electrician | 8h |
| 10 | 2.5 | Delivery of Material to Lab |  | 8w | 2003-11-14 | 2004-01-08 | 6 | 8d | 0d | Cisco | 320h |
| 11 | 3 | **Design** |  | 50d | 2003-11-27 | 2004-02-04 |  | 0d |  |  | 800h |
| 12 | 3.1 | Define User Profiles |  | 4w | 2003-11-27 | 2003-12-24 | 4 | 0d |  | NWP | 160h |
| 13 | 3.2 | Define Dial Plan |  | 4w | 2003-11-27 | 2003-12-24 | 4 | 0d |  | NWP | 160h |
| 14 | 3.3 | Define IP Concept |  | 4w | 2003-11-27 | 2003-12-24 | 4 | 0d |  | NWP | 160h |
| 15 | 3.4 | Validate Design |  | 2w | 2003-12-25 | 2004-01-07 | 12, 14, 13 | 0d |  | Customer | 80h |
| 16 | 3.5 | Collect user datas |  | 2w | 2004-01-08 | 2004-01-21 | 15 | 4d | 0d | Customer | 80h |
| 17 | 3.6 | Create Acceptance Documents |  | 2w | 2004-01-08 | 2004-01-21 | 15 | 0d |  | NWP | 80h |
| 18 | 3.7 | Validate Acceptance |  | 2w | 2004-01-22 | 2004-02-04 | 17 | 0d |  | Customer | 80h |
| 19 | 4 | **Configurations** |  | 12d | 2004-01-09 | 2004-01-26 |  | 4d |  |  | 80h |
| 20 | 4.1 | Config LAN Devices |  | 1d | 2004-01-09 | 2004-01-09 | 10 | 12d | 8d | NWP | 8h |
| 21 | 4.2 | Config Gateways |  | 0.5d | 2004-01-09 | 2004-01-09 | 10 | 12.5d | 8.5d | NWP; SCU | 8h |
| 22 | 4.3 | CCM Basic Config |  | 5d | 2004-01-09 | 2004-01-15 | 10 | 8d | 4d | NWP | 40h |
| 23 | 4.4 | Configuration of User Data |  | 2d | 2004-01-22 | 2004-01-23 | 22, 16, 20, 21 | 4d | 0d | NWP | 16h |
| 24 | 4.5 | Lab Tests |  | 1d | 2004-01-26 | 2004-01-26 | 23 | 4d | 0d | NWP | 8h |

| ID | WBS | Task | Duration | Start | Finish | Predecessors | Total slack | Free slack | Resources | Work |
| --- | --- | --- | --- | --- | --- | --- | --- | --- | --- | --- |
| 25 | 5 | **Installation** | 3d | 2004-01-27 | 2004-01-29 |  | 4d |  |  | 72h |
| 26 | 5.1 | Transporte to site | 1d | 2004-01-27 | 2004-01-27 | 24 | 4d | 0d | P&L | 8h |
| 27 | 5.2 | Installation LAN | 2d | 2004-01-28 | 2004-01-29 | 26 | 4d |  | SCU | 16h |
| 28 | 5.3 | Installation Gateways | 2d | 2004-01-28 | 2004-01-29 | 26 | 4d |  | SCU | 16h |
| 29 | 5.4 | Installation of Callmanager | 2d | 2004-01-28 | 2004-01-29 | 26 | 4d |  | SCU | 16h |
| 30 | 5.5 | Installation of IP Phone | 2d | 2004-01-28 | 2004-01-29 | 26 | 4d |  | SCU | 16h |
| 31 | 6 | **Acceptance & Rollout** | 4d | 2004-02-05 | 2004-02-10 |  | 0d |  |  | 40h |
| 32 | 6.1 | Acceptance Tests | 1d | 2004-02-05 | 2004-02-05 | 30, 27, 18, 29, 28 | 0d |  | SCU | 8h |
| 33 | 6.2 | Administration Training (if ordered) | 2d | 2004-02-06 | 2004-02-09 | 32 | 0d |  | NWP | 16h |
| 34 | 6.3 | User Training | 1d | 2004-02-06 | 2004-02-06 | 7, 32 | 1d |  | Systems | 8h |
| 35 | 6.4 | Migration of PBX | 1d | 2004-02-10 | 2004-02-10 | 34, 33 | 0d |  | SCU | 8h |
| 36 | 7 | **Project End** | 26d | 2004-01-08 | 2004-02-12 |  | 0d |  |  | 40h |
| 37 | 7.1 | Documentation | 1d | 2004-01-08 | 2004-01-08 | 15 | 23d |  | NWP; PM | 16h |
| 38 | 7.2 | Delivery Note | 1d | 2004-02-11 | 2004-02-11 | 35, 37 | 0d |  | PM | 8h |
| 39 | 7.3 | Final Acceptance Statement | 1d | 2004-02-12 | 2004-02-12 | 38 | 0d |  | PM | 8h |
| 40 | 7.4 | Start Maintenance Contract | 1d | 2004-02-12 | 2004-02-12 | 38 | 0d |  | NOC | 8h |
